# EMS

Schedule from MS Project, 2018-06-01 to 2018-11-05.

## Calendars

- Standard: Mon-Fri 08:00-12:00, 13:00-17:00; Sat-Sun off.

## Resources

| Resource |
| --- |
| Dev1 |
| Dev2 |

## Schedule

| ID | WBS | Task | Duration | Start | Finish | Predecessors | Total slack | Free slack | Constraint | Resources | Work |
| --- | --- | --- | --- | --- | --- | --- | --- | --- | --- | --- | --- |
| 1 | 1 | **Utilities** | 19d | 2018-06-01 | 2018-06-27 |  | 0d |  |  |  | 304h |
| 2 | 1.1 | **Set-up's** | 10d | 2018-06-01 | 2018-06-14 |  | 0d |  |  |  | 152h |
| 3 | 1.1.1 | - General Setup | 1d | 2018-06-01 | 2018-06-01 |  | 0d |  | start no earlier than 2018-06-01 | Dev1 | 8h |
| 4 | 1.1.2 | - Bulletin Type | 1d | 2018-06-01 | 2018-06-01 |  | 1d | 0d | start no earlier than 2018-06-01 | Dev2 | 8h |
| 5 | 1.1.3 | - Master Part List | 1d | 2018-06-04 | 2018-06-04 | 3 | 0d |  |  | Dev1 | 8h |
| 6 | 1.1.4 | - Repair Order Counter | 1d | 2018-06-04 | 2018-06-04 | 4 | 1d | 0d |  | Dev2 | 8h |
| 7 | 1.1.5 | - Vendors | 1d | 2018-06-05 | 2018-06-05 | 5 | 0d |  |  | Dev1 | 8h |
| 8 | 1.1.6 | - Vendor Code Counter | 1d | 2018-06-05 | 2018-06-05 | 6 | 1d | 0d |  | Dev2 | 8h |
| 9 | 1.1.7 | - Sites | 1d | 2018-06-06 | 2018-06-06 | 7 | 0d |  |  | Dev1 | 8h |
| 10 | 1.1.8 | - PO Setup | 1d | 2018-06-06 | 2018-06-06 | 8 | 1d | 0d |  | Dev2 | 8h |
| 11 | 1.1.9 | - PO Control Codes | 1d | 2018-06-07 | 2018-06-07 | 9 | 0d |  |  | Dev1 | 8h |
| 12 | 1.1.10 | - Shipping Company | 1d | 2018-06-07 | 2018-06-07 | 10 | 1d | 0d |  | Dev2 | 8h |
| 13 | 1.1.11 | - Shipping Method | 1d | 2018-06-08 | 2018-06-08 | 11 | 0d |  |  | Dev1 | 8h |
| 14 | 1.1.12 | - Work Order Setup | 1d | 2018-06-08 | 2018-06-08 | 12 | 1d | 0d |  | Dev2 | 8h |
| 15 | 1.1.13 | - ATA Definition | 1d | 2018-06-11 | 2018-06-11 | 13 | 0d |  |  | Dev1 | 8h |
| 16 | 1.1.14 | - Station Definition | 1d | 2018-06-11 | 2018-06-11 | 14 | 1d | 0d |  | Dev2 | 8h |
| 17 | 1.1.15 | - Pilots | 1d | 2018-06-12 | 2018-06-12 | 15 | 0d |  |  | Dev1 | 8h |
| 18 | 1.1.16 | - Set Warning Times | 1d | 2018-06-12 | 2018-06-12 | 16 | 1d | 0d |  | Dev2 | 8h |
| 19 | 1.1.17 | - Reserve Value | 1d | 2018-06-13 | 2018-06-13 | 17 | 0d |  |  | Dev1 | 8h |
| 20 | 1.1.18 | - Currency Rates | 1d | 2018-06-13 | 2018-06-13 | 18 | 1d | 0d |  | Dev2 | 8h |
| 21 | 1.1.19 | - Security Setup | 1d | 2018-06-14 | 2018-06-14 | 19 | 0d |  |  | Dev1 | 8h |
| 22 | 1.2 | **Update Data Files** | 3d | 2018-06-14 | 2018-06-18 |  | 1d |  |  |  | 40h |
| 23 | 1.2.1 | - Build Structure | 1d | 2018-06-14 | 2018-06-14 | 20 | 1d | 0d |  | Dev2 | 8h |
| 24 | 1.2.2 | - Update Indexes | 1d | 2018-06-15 | 2018-06-15 | 21 | 0d |  |  | Dev1 | 8h |
| 25 | 1.2.3 | - Check\Fix Files | 1d | 2018-06-15 | 2018-06-15 | 23 | 1d | 0d |  | Dev2 | 8h |
| 26 | 1.2.4 | - Upgrade Program | 1d | 2018-06-18 | 2018-06-18 | 24 | 0d |  |  | Dev1 | 8h |
| 27 | 1.2.5 | - Avref File Import | 1d | 2018-06-18 | 2018-06-18 | 25 | 1d | 0d |  | Dev2 | 8h |
| 28 | 1.3 | Fleetwide Part Search | 1d | 2018-06-19 | 2018-06-19 | 26 | 0d |  |  | Dev1 | 8h |
| 29 | 1.4 | Set Warning Times | 1d | 2018-06-19 | 2018-06-19 | 27 | 1d | 0d |  | Dev2 | 8h |

| ID | WBS | Task | Duration | Start | Finish | Predecessors | Total slack | Free slack | Resources | Work |
| --- | --- | --- | --- | --- | --- | --- | --- | --- | --- | --- |
| 30 | 1.5 | **Adjust Inventory Records** | 4d | 2018-06-20 | 2018-06-25 |  | 0d |  |  | 56h |
| 31 | 1.5.1 | - Part Numbers | 1d | 2018-06-20 | 2018-06-20 | 28 | 0d |  | Dev1 | 8h |
| 32 | 1.5.2 | - Bins | 1d | 2018-06-20 | 2018-06-20 | 29 | 1d | 0d | Dev2 | 8h |
| 33 | 1.5.3 | - Locations | 1d | 2018-06-21 | 2018-06-21 | 31 | 0d |  | Dev1 | 8h |
| 34 | 1.5.4 | - Models | 1d | 2018-06-21 | 2018-06-21 | 32 | 1d | 0d | Dev2 | 8h |
| 35 | 1.5.5 | - Check for Corruption | 1d | 2018-06-22 | 2018-06-22 | 33 | 0d |  | Dev1 | 8h |
| 36 | 1.5.6 | - Batch Inv. Update | 1d | 2018-06-22 | 2018-06-22 | 34 | 1d | 0d | Dev2 | 8h |
| 37 | 1.5.7 | - Batch Inv. by Bin | 1d | 2018-06-25 | 2018-06-25 | 35 | 0d |  | Dev1 | 8h |
| 38 | 1.6 | Backup Data | 1d | 2018-06-25 | 2018-06-25 | 36 | 1d | 0d | Dev2 | 8h |
| 39 | 1.7 | **Engine Cycles Setup** | 1d | 2018-06-26 | 2018-06-26 |  | 0d |  |  | 16h |
| 40 | 1.7.1 | - Pratt & Whitney | 1d | 2018-06-26 | 2018-06-26 | 37 | 0d |  | Dev1 | 8h |
| 41 | 1.7.2 | - PT6B-37A | 1d | 2018-06-26 | 2018-06-26 | 38 | 1d | 0d | Dev2 | 8h |
| 42 | 1.8 | Security Setup | 1d | 2018-06-27 | 2018-06-27 | 40 | 0d |  | Dev1 | 8h |
| 43 | 1.9 | About | 1d | 2018-06-27 | 2018-06-27 | 41 | 1d | 0d | Dev2 | 8h |
| 44 | 2 | **Maintenance** | 8d | 2018-06-28 | 2018-07-09 |  | 0d |  |  | 120h |
| 45 | 2.1 | Airframe | 1d | 2018-06-28 | 2018-06-28 | 42 | 0d |  | Dev1 | 8h |
| 46 | 2.2 | Engine | 1d | 2018-06-28 | 2018-06-28 | 43 | 1d | 0d | Dev2 | 8h |
| 47 | 2.3 | **Auxiliary** | 2d | 2018-06-29 | 2018-07-02 |  | 0d |  |  | 24h |
| 48 | 2.3.1 | -Logbook | 1d | 2018-06-29 | 2018-06-29 | 45 | 0d |  | Dev1 | 8h |
| 49 | 2.3.2 | -Inspection | 1d | 2018-06-29 | 2018-06-29 | 46 | 1d | 0d | Dev2 | 8h |
| 50 | 2.3.3 | -Daily Utilization | 1d | 2018-07-02 | 2018-07-02 | 48 | 0d |  | Dev1 | 8h |
| 51 | 2.4 | Add Flight Time | 1d | 2018-07-02 | 2018-07-02 | 49 | 1d | 0d | Dev2 | 8h |
| 52 | 2.5 | **Verify Flight Time** | 2d | 2018-07-03 | 2018-07-04 |  | 0d |  |  | 32h |
| 53 | 2.5.1 | - Verify Flight Time | 1d | 2018-07-03 | 2018-07-03 | 50 | 0d |  | Dev1 | 8h |
| 54 | 2.5.2 | - Manual Changes | 1d | 2018-07-03 | 2018-07-03 | 51 | 1d | 0d | Dev2 | 8h |
| 55 | 2.5.3 | - Adjust Flight Time | 1d | 2018-07-04 | 2018-07-04 | 53 | 0d |  | Dev1 | 8h |
| 56 | 2.5.4 | - Compiled Periodic Inspection | 1d | 2018-07-04 | 2018-07-04 | 54 | 1d | 0d | Dev2 | 8h |

| ID | WBS | Task | Duration | Start | Finish | Predecessors | Total slack | Free slack | Resources | Work |
| --- | --- | --- | --- | --- | --- | --- | --- | --- | --- | --- |
| 57 | 2.6 | **BEL** | 3d | 2018-07-05 | 2018-07-09 |  | 0d |  |  | 40h |
| 58 | 2.6.1 | - Airframe | 1d | 2018-07-05 | 2018-07-05 | 55 | 0d |  | Dev1 | 8h |
| 59 | 2.6.2 | - Engine | 1d | 2018-07-05 | 2018-07-05 | 56 | 1d | 0d | Dev2 | 8h |
| 60 | 2.6.3 | - Auxiliary | 1d | 2018-07-06 | 2018-07-06 | 58 | 0d |  | Dev1 | 8h |
| 61 | 2.6.4 | - Checklist | 1d | 2018-07-06 | 2018-07-06 | 59 | 1d | 0d | Dev2 | 8h |
| 62 | 2.6.5 | - Print BEL List | 1d | 2018-07-09 | 2018-07-09 | 60 | 0d |  | Dev1 | 8h |
| 63 | 3 | **Bulletins** | 5d | 2018-07-09 | 2018-07-13 |  | 0d |  |  | 64h |
| 64 | 3.1 | Airframe | 1d | 2018-07-09 | 2018-07-09 | 61 | 1d | 0d | Dev2 | 8h |
| 65 | 3.2 | Engine | 1d | 2018-07-10 | 2018-07-10 | 62 | 0d |  | Dev1 | 8h |
| 66 | 3.3 | Auxiliary | 1d | 2018-07-10 | 2018-07-10 | 64 | 1d | 0d | Dev2 | 8h |
| 67 | 3.4 | Tracking Bulletin | 1d | 2018-07-11 | 2018-07-11 | 65 | 0d |  | Dev1 | 8h |
| 68 | 3.5 | Bulletin Type Setup | 1d | 2018-07-11 | 2018-07-11 | 66 | 1d | 0d | Dev2 | 8h |
| 69 | 3.6 | Fleetwide Bulletin Report | 1d | 2018-07-12 | 2018-07-12 | 67 | 0d |  | Dev1 | 8h |
| 70 | 3.7 | **Compiled Bulletin** | 2d | 2018-07-12 | 2018-07-13 |  | 0d |  |  | 16h |
| 71 | 3.7.1 | - Compiled Bulletin | 1d | 2018-07-12 | 2018-07-12 | 68 | 1d | 0d | Dev2 | 8h |
| 72 | 3.7.2 | - Report | 1d | 2018-07-13 | 2018-07-13 | 69 | 0d |  | Dev1 | 8h |
| 73 | 4 | **Inventory** | 37d | 2018-07-13 | 2018-09-03 |  | 0d |  |  | 576h |
| 74 | 4.1 | Master Part List | 1d | 2018-07-13 | 2018-07-13 | 71 | 1d | 0d | Dev2 | 8h |
| 75 | 4.2 | Inventory | 1d | 2018-07-16 | 2018-07-16 | 72 | 0d |  | Dev1 | 8h |
| 76 | 4.3 | **Dispense Inv / Repair Order** | 2d | 2018-07-16 | 2018-07-17 |  | 1d |  |  | 24h |
| 77 | 4.3.1 | - Repair Order | 1d | 2018-07-16 | 2018-07-16 | 74 | 1d | 0d | Dev2 | 8h |
| 78 | 4.3.2 | - Repair Order Counter | 1d | 2018-07-17 | 2018-07-17 | 75 | 0d |  | Dev1 | 8h |
| 79 | 4.3.3 | - Transfered Inventory | 1d | 2018-07-17 | 2018-07-17 | 77 | 1d | 0d | Dev2 | 8h |
| 80 | 4.4 | Tracking Inventory | 1d | 2018-07-18 | 2018-07-18 | 78 | 0d |  | Dev1 | 8h |
| 81 | 4.5 | Non Aircraft Inventory | 1d | 2018-07-18 | 2018-07-18 | 79 | 1d | 0d | Dev2 | 8h |
| 82 | 4.6 | Physical Inventory | 1d | 2018-07-19 | 2018-07-19 | 80 | 0d |  | Dev1 | 8h |
| 83 | 4.7 | Credit Claim | 1d | 2018-07-19 | 2018-07-19 | 81 | 1d | 0d | Dev2 | 8h |
| 84 | 4.8 | Tool | 1d | 2018-07-20 | 2018-07-20 | 82 | 0d |  | Dev1 | 8h |

| ID | WBS | Task | Duration | Start | Finish | Predecessors | Total slack | Free slack | Resources | Work |
| --- | --- | --- | --- | --- | --- | --- | --- | --- | --- | --- |
| 85 | 4.9 | **Vendor** | 4d | 2018-07-20 | 2018-07-25 |  | 1d |  |  | 56h |
| 86 | 4.9.1 | - Vendor Entry Screen | 1d | 2018-07-20 | 2018-07-20 | 83 | 1d | 0d | Dev2 | 8h |
| 87 | 4.9.2 | - Setup Vendor Code Counter | 1d | 2018-07-23 | 2018-07-23 | 84 | 0d |  | Dev1 | 8h |
| 88 | 4.9.3 | - Vendor Report | 1d | 2018-07-23 | 2018-07-23 | 86 | 1d | 0d | Dev2 | 8h |
| 89 | 4.9.4 | - Approved Vendor List | 1d | 2018-07-24 | 2018-07-24 | 87 | 0d |  | Dev1 | 8h |
| 90 | 4.9.5 | - Approved Vendor Due | 1d | 2018-07-24 | 2018-07-24 | 88 | 1d | 0d | Dev2 | 8h |
| 91 | 4.9.6 | - Purchase History by Vendor | 1d | 2018-07-25 | 2018-07-25 | 89 | 0d |  | Dev1 | 8h |
| 92 | 4.9.7 | - Inventory by Vendor | 1d | 2018-07-25 | 2018-07-25 | 90 | 1d | 0d | Dev2 | 8h |
| 93 | 4.10 | Sites | 1d | 2018-07-26 | 2018-07-26 | 91 | 0d |  | Dev1 | 8h |
| 94 | 4.11 | Customers | 1d | 2018-07-26 | 2018-07-26 | 92 | 1d | 0d | Dev2 | 8h |
| 95 | 4.12 | Publication Library | 1d | 2018-07-27 | 2018-07-27 | 93 | 0d |  | Dev1 | 8h |
| 96 | 4.13 | Inventory History | 1d | 2018-07-27 | 2018-07-27 | 94 | 1d | 0d | Dev2 | 8h |
| 97 | 4.14 | **Kits** | 1d | 2018-07-30 | 2018-07-30 |  | 0d |  |  | 16h |
| 98 | 4.14.1 | - Kit Definition | 1d | 2018-07-30 | 2018-07-30 | 95 | 0d |  | Dev1 | 8h |
| 99 | 4.14.2 | - Generate Kits | 1d | 2018-07-30 | 2018-07-30 | 96 | 1d | 0d | Dev2 | 8h |
| 100 | 4.15 | **Reports** | 25d | 2018-07-31 | 2018-09-03 |  | 0d |  |  | 392h |
| 101 | 4.15.1 | - Report General Inventory | 1d | 2018-07-31 | 2018-07-31 | 98 | 0d |  | Dev1 | 8h |
| 102 | 4.15.2 | - Report Shelf Life | 1d | 2018-07-31 | 2018-07-31 | 99 | 1d | 0d | Dev2 | 8h |
| 103 | 4.15.3 | - Report Warranty | 1d | 2018-08-01 | 2018-08-01 | 101 | 0d |  | Dev1 | 8h |
| 104 | 4.15.4 | - Report Accounting Cost | 1d | 2018-08-01 | 2018-08-01 | 102 | 1d | 0d | Dev2 | 8h |
| 105 | 4.15.5 | - Report Credit Claim | 1d | 2018-08-02 | 2018-08-02 | 103 | 0d |  | Dev1 | 8h |
| 106 | 4.15.6 | - Report Non-Aircraft Inventory | 1d | 2018-08-02 | 2018-08-02 | 104 | 1d | 0d | Dev2 | 8h |
| 107 | 4.15.7 | - Report Variance | 1d | 2018-08-03 | 2018-08-03 | 105 | 0d |  | Dev1 | 8h |
| 108 | 4.15.8 | - Report Inventory History | 1d | 2018-08-03 | 2018-08-03 | 106 | 1d | 0d | Dev2 | 8h |
| 109 | 4.15.9 | - Report Tracked Comps. in Inv. | 1d | 2018-08-06 | 2018-08-06 | 107 | 0d |  | Dev1 | 8h |
| 110 | 4.15.10 | - Report Inventory Value List | 1d | 2018-08-06 | 2018-08-06 | 108 | 1d | 0d | Dev2 | 8h |
| 111 | 4.15.11 | - Report Inventory Value Cost | 1d | 2018-08-07 | 2018-08-07 | 109 | 0d |  | Dev1 | 8h |
| 112 | 4.15.12 | - Report Inventory at List & Cost | 1d | 2018-08-07 | 2018-08-07 | 110 | 1d | 0d | Dev2 | 8h |
| 113 | 4.15.13 | - Report Inventory Receipt | 1d | 2018-08-08 | 2018-08-08 | 111 | 0d |  | Dev1 | 8h |
| 114 | 4.15.14 | - Report Repair Order Parts | 1d | 2018-08-08 | 2018-08-08 | 112 | 1d | 0d | Dev2 | 8h |
| 115 | 4.15.15 | - Report Vendors | 1d | 2018-08-09 | 2018-08-09 | 113 | 0d |  | Dev1 | 8h |
| 116 | 4.15.16 | - Report Approved Vendor List | 1d | 2018-08-09 | 2018-08-09 | 114 | 1d | 0d | Dev2 | 8h |
| 117 | 4.15.17 | - Report Appr. Vendor Audit Due | 1d | 2018-08-10 | 2018-08-10 | 115 | 0d |  | Dev1 | 8h |
| 118 | 4.15.18 | - Report Tools | 1d | 2018-08-10 | 2018-08-10 | 116 | 1d | 0d | Dev2 | 8h |
| 119 | 4.15.19 | - Report Non-Servicables | 1d | 2018-08-13 | 2018-08-13 | 117 | 0d |  | Dev1 | 8h |
| 120 | 4.15.20 | - Report Part Usage | 1d | 2018-08-13 | 2018-08-13 | 118 | 1d | 0d | Dev2 | 8h |
| 121 | 4.15.21 | - Report Part By A/C Type | 1d | 2018-08-14 | 2018-08-14 | 119 | 0d |  | Dev1 | 8h |
| 122 | 4.15.22 | - Report Reorder | 1d | 2018-08-14 | 2018-08-14 | 120 | 1d | 0d | Dev2 | 8h |
| 123 | 4.15.23 | - Report Additional Reports | 1d | 2018-08-15 | 2018-08-15 | 121 | 0d |  | Dev1 | 8h |
| 124 | 4.15.24 | - Report Vendor | 1d | 2018-08-15 | 2018-08-15 | 122 | 1d | 0d | Dev2 | 8h |
| 125 | 4.15.25 | - Report Consolidation | 1d | 2018-08-16 | 2018-08-16 | 123 | 0d |  | Dev1 | 8h |
| 126 | 4.15.26 | - Report Control Code | 1d | 2018-08-16 | 2018-08-16 | 124 | 1d | 0d | Dev2 | 8h |
| 127 | 4.15.27 | - Report Serial No. | 1d | 2018-08-17 | 2018-08-17 | 125 | 0d |  | Dev1 | 8h |
| 128 | 4.15.28 | - Report Part No. | 1d | 2018-08-17 | 2018-08-17 | 126 | 1d | 0d | Dev2 | 8h |
| 129 | 4.15.29 | - Report Bin And Location | 1d | 2018-08-20 | 2018-08-20 | 127 | 0d |  | Dev1 | 8h |
| 130 | 4.15.30 | - Report Inventory By Bin | 1d | 2018-08-20 | 2018-08-20 | 128 | 1d | 0d | Dev2 | 8h |
| 131 | 4.15.31 | - Report Qty Only | 1d | 2018-08-21 | 2018-08-21 | 129 | 0d |  | Dev1 | 8h |
| 132 | 4.15.32 | - Report Daily Work | 1d | 2018-08-21 | 2018-08-21 | 130 | 1d | 0d | Dev2 | 8h |
| 133 | 4.15.33 | - Report NSN Report | 1d | 2018-08-22 | 2018-08-22 | 131 | 0d |  | Dev1 | 8h |
| 134 | 4.15.34 | - Report CoRe Value | 1d | 2018-08-22 | 2018-08-22 | 132 | 1d | 0d | Dev2 | 8h |
| 135 | 4.15.35 | - Report Inventory By Model | 1d | 2018-08-23 | 2018-08-23 | 133 | 0d |  | Dev1 | 8h |
| 136 | 4.15.36 | - Report System-wide Movement | 1d | 2018-08-23 | 2018-08-23 | 134 | 1d | 0d | Dev2 | 8h |

| ID | WBS | Task | Duration | Start | Finish | Predecessors | Total slack | Free slack | Resources | Work |
| --- | --- | --- | --- | --- | --- | --- | --- | --- | --- | --- |
| 137 | 4.15.37 | **- Additional Reports** | 7d | 2018-08-24 | 2018-09-03 |  | 0d |  |  | 104h |
| 138 | 4.15.37.1 | - Vendor | 1d | 2018-08-24 | 2018-08-24 | 135 | 0d |  | Dev1 | 8h |
| 139 | 4.15.37.2 | - Consolidation | 1d | 2018-08-24 | 2018-08-24 | 136 | 1d | 0d | Dev2 | 8h |
| 140 | 4.15.37.3 | - Control Code | 1d | 2018-08-27 | 2018-08-27 | 138 | 0d |  | Dev1 | 8h |
| 141 | 4.15.37.4 | - Serial No. | 1d | 2018-08-27 | 2018-08-27 | 139 | 1d | 0d | Dev2 | 8h |
| 142 | 4.15.37.5 | - Part No. | 1d | 2018-08-28 | 2018-08-28 | 140 | 0d |  | Dev1 | 8h |
| 143 | 4.15.37.6 | - Bin And Location | 1d | 2018-08-28 | 2018-08-28 | 141 | 1d | 0d | Dev2 | 8h |
| 144 | 4.15.37.7 | - Inventory By Bin | 1d | 2018-08-29 | 2018-08-29 | 142 | 0d |  | Dev1 | 8h |
| 145 | 4.15.37.8 | - Qty Only | 1d | 2018-08-29 | 2018-08-29 | 143 | 1d | 0d | Dev2 | 8h |
| 146 | 4.15.37.9 | - Daily Work | 1d | 2018-08-30 | 2018-08-30 | 144 | 0d |  | Dev1 | 8h |
| 147 | 4.15.37.10 | - NSN Report | 1d | 2018-08-30 | 2018-08-30 | 145 | 1d | 0d | Dev2 | 8h |
| 148 | 4.15.37.11 | - CoRe Value | 1d | 2018-08-31 | 2018-08-31 | 146 | 0d |  | Dev1 | 8h |
| 149 | 4.15.37.12 | - Inventory By Model | 1d | 2018-08-31 | 2018-08-31 | 147 | 1d | 0d | Dev2 | 8h |
| 150 | 4.15.37.13 | - System-wide Movement | 1d | 2018-09-03 | 2018-09-03 | 148 | 0d |  | Dev1 | 8h |
| 151 | 5 | **Orders** | 23d | 2018-09-03 | 2018-10-03 |  | 0d |  |  | 352h |
| 152 | 5.1 | Purchase Orders | 1d | 2018-09-03 | 2018-09-03 | 149 | 1d | 0d | Dev2 | 8h |
| 153 | 5.2 | Work Order | 1d | 2018-09-04 | 2018-09-04 | 150 | 0d |  | Dev1 | 8h |
| 154 | 5.3 | Repair Order | 1d | 2018-09-04 | 2018-09-04 | 152 | 1d | 0d | Dev2 | 8h |
| 155 | 5.4 | **P/O management** | 8d | 2018-09-05 | 2018-09-14 |  | 0d |  |  | 120h |
| 156 | 5.4.1 | - Purchase Order | 1d | 2018-09-05 | 2018-09-05 | 153 | 0d |  | Dev1 | 8h |
| 157 | 5.4.2 | - Receipt Against P. O. | 1d | 2018-09-05 | 2018-09-05 | 154 | 1d | 0d | Dev2 | 8h |
| 158 | 5.4.3 | - Close\Cancel P. O. | 1d | 2018-09-06 | 2018-09-06 | 156 | 0d |  | Dev1 | 8h |
| 159 | 5.4.4 | - View Archived P. O. | 1d | 2018-09-06 | 2018-09-06 | 157 | 1d | 0d | Dev2 | 8h |
| 160 | 5.4.5 | - Open Archived PO's | 1d | 2018-09-07 | 2018-09-07 | 158 | 0d |  | Dev1 | 8h |
| 161 | 5.4.6 | - Print PO's | 1d | 2018-09-07 | 2018-09-07 | 159 | 1d | 0d | Dev2 | 8h |
| 162 | 5.4.7 | - PO Setup | 1d | 2018-09-10 | 2018-09-10 | 160 | 0d |  | Dev1 | 8h |
| 163 | 5.4.8 | - PO Control Codes | 1d | 2018-09-10 | 2018-09-10 | 161 | 1d | 0d | Dev2 | 8h |
| 164 | 5.4.9 | - Shipping Method | 1d | 2018-09-11 | 2018-09-11 | 162 | 0d |  | Dev1 | 8h |
| 165 | 5.4.10 | - PaiD Invoice | 1d | 2018-09-11 | 2018-09-11 | 163 | 1d | 0d | Dev2 | 8h |
| 166 | 5.4.11 | - Post Receipts to A/P | 1d | 2018-09-12 | 2018-09-12 | 164 | 0d |  | Dev1 | 8h |
| 167 | 5.4.12 | - Parts in PO | 1d | 2018-09-12 | 2018-09-12 | 165 | 1d | 0d | Dev2 | 8h |
| 168 | 5.4.13 | - List of Parts On Order | 1d | 2018-09-13 | 2018-09-13 | 166 | 0d |  | Dev1 | 8h |
| 169 | 5.4.14 | - Part in Open PO | 1d | 2018-09-13 | 2018-09-13 | 167 | 1d | 0d | Dev2 | 8h |
| 170 | 5.4.15 | - Outstanding Parts | 1d | 2018-09-14 | 2018-09-14 | 168 | 0d |  | Dev1 | 8h |

| ID | WBS | Task | Duration | Start | Finish | Predecessors | Total slack | Free slack | Resources | Work |
| --- | --- | --- | --- | --- | --- | --- | --- | --- | --- | --- |
| 171 | 5.5 | **W/O management** | 12d | 2018-09-14 | 2018-10-01 |  | 1d |  |  | 184h |
| 172 | 5.5.1 | - Active Work Orders | 1d | 2018-09-14 | 2018-09-14 | 169 | 1d | 0d | Dev2 | 8h |
| 173 | 5.5.2 | - Initiate Work Orders | 1d | 2018-09-17 | 2018-09-17 | 170 | 0d |  | Dev1 | 8h |
| 174 | 5.5.3 | - View Archived Work Order | 1d | 2018-09-17 | 2018-09-17 | 172 | 1d | 0d | Dev2 | 8h |
| 175 | 5.5.4 | - Open Archived Work Order | 1d | 2018-09-18 | 2018-09-18 | 173 | 0d |  | Dev1 | 8h |
| 176 | 5.5.5 | - Print Work Order Report | 1d | 2018-09-18 | 2018-09-18 | 174 | 1d | 0d | Dev2 | 8h |
| 177 | 5.5.6 | - Aircraft Tail Number | 1d | 2018-09-19 | 2018-09-19 | 175 | 0d |  | Dev1 | 8h |
| 178 | 5.5.7 | - Engine Serial Number | 1d | 2018-09-19 | 2018-09-19 | 176 | 1d | 0d | Dev2 | 8h |
| 179 | 5.5.8 | - Auxiliary Number | 1d | 2018-09-20 | 2018-09-20 | 177 | 0d |  | Dev1 | 8h |
| 180 | 5.5.9 | - Part Number | 1d | 2018-09-20 | 2018-09-20 | 178 | 1d | 0d | Dev2 | 8h |
| 181 | 5.5.10 | - Other | 1d | 2018-09-21 | 2018-09-21 | 179 | 0d |  | Dev1 | 8h |
| 182 | 5.5.11 | - Scheduled Maintenance | 1d | 2018-09-21 | 2018-09-21 | 180 | 1d | 0d | Dev2 | 8h |
| 183 | 5.5.12 | - Unscheduled Maintenance | 1d | 2018-09-24 | 2018-09-24 | 181 | 0d |  | Dev1 | 8h |
| 184 | 5.5.13 | - Work Code | 1d | 2018-09-24 | 2018-09-24 | 182 | 1d | 0d | Dev2 | 8h |
| 185 | 5.5.14 | - ATA Code | 1d | 2018-09-25 | 2018-09-25 | 183 | 0d |  | Dev1 | 8h |
| 186 | 5.5.15 | - Spesific Mechanic | 1d | 2018-09-25 | 2018-09-25 | 184 | 1d | 0d | Dev2 | 8h |
| 187 | 5.5.16 | - Part Usage | 1d | 2018-09-26 | 2018-09-26 | 185 | 0d |  | Dev1 | 8h |
| 188 | 5.5.17 | - Workorder Setup | 1d | 2018-09-26 | 2018-09-26 | 186 | 1d | 0d | Dev2 | 8h |
| 189 | 5.5.18 | - Auto Work Order | 1d | 2018-09-27 | 2018-09-27 | 187 | 0d |  | Dev1 | 8h |
| 190 | 5.5.19 | - MELS Deferred by mechanics | 1d | 2018-09-27 | 2018-09-27 | 188 | 1d | 0d | Dev2 | 8h |
| 191 | 5.5.20 | - Job Cards | 1d | 2018-09-28 | 2018-09-28 | 189 | 0d |  | Dev1 | 8h |
| 192 | 5.5.21 | - Job Cards Entry | 1d | 2018-09-28 | 2018-09-28 | 190 | 1d | 0d | Dev2 | 8h |
| 193 | 5.5.22 | - Job Cards Report | 1d | 2018-10-01 | 2018-10-01 | 191 | 0d |  | Dev1 | 8h |
| 194 | 5.5.23 | - Archive Job Cards | 1d | 2018-10-01 | 2018-10-01 | 192 | 1d | 0d | Dev2 | 8h |

| ID | WBS | Task | Duration | Start | Finish | Predecessors | Total slack | Free slack | Resources | Work |
| --- | --- | --- | --- | --- | --- | --- | --- | --- | --- | --- |
| 195 | 5.6 | **R/O Management** | 2d | 2018-10-02 | 2018-10-03 |  | 0d |  |  | 24h |
| 196 | 5.6.1 | - Repair Order | 1d | 2018-10-02 | 2018-10-02 | 193 | 0d |  | Dev1 | 8h |
| 197 | 5.6.2 | - Repair Order Counter | 1d | 2018-10-02 | 2018-10-02 | 194 | 1d | 0d | Dev2 | 8h |
| 198 | 5.6.3 | - R/O Parts Report | 1d | 2018-10-03 | 2018-10-03 | 196 | 0d |  | Dev1 | 8h |
| 199 | 6 | **CAS** | 9d | 2018-10-03 | 2018-10-15 |  | 1d |  |  | 136h |
| 200 | 6.1 | CAS | 1d | 2018-10-03 | 2018-10-03 | 197 | 1d | 0d | Dev2 | 8h |
| 201 | 6.2 | Corrective Action Request | 1d | 2018-10-04 | 2018-10-04 | 198 | 0d |  | Dev1 | 8h |
| 202 | 6.3 | MEL Extension | 1d | 2018-10-04 | 2018-10-04 | 200 | 1d | 0d | Dev2 | 8h |
| 203 | 6.4 | Repeat Discrepancy | 1d | 2018-10-05 | 2018-10-05 | 201 | 0d |  | Dev1 | 8h |
| 204 | 6.5 | **Reports** | 5d | 2018-10-05 | 2018-10-11 |  | 1d |  |  | 72h |
| 205 | 6.5.1 | - Maint. Control Log | 1d | 2018-10-05 | 2018-10-05 | 202 | 1d | 0d | Dev2 | 8h |
| 206 | 6.5.2 | - MEL Extension | 1d | 2018-10-08 | 2018-10-08 | 203 | 0d |  | Dev1 | 8h |
| 207 | 6.5.3 | - Ferry Flight | 1d | 2018-10-08 | 2018-10-08 | 205 | 1d | 0d | Dev2 | 8h |
| 208 | 6.5.4 | - Corrective Action Log | 1d | 2018-10-09 | 2018-10-09 | 206 | 0d |  | Dev1 | 8h |
| 209 | 6.5.5 | - Prem. Engine Removal | 1d | 2018-10-09 | 2018-10-09 | 207 | 1d | 0d | Dev2 | 8h |
| 210 | 6.5.6 | - MRR Status Report | 1d | 2018-10-10 | 2018-10-10 | 208 | 0d |  | Dev1 | 8h |
| 211 | 6.5.7 | - MRR Detail Report | 1d | 2018-10-10 | 2018-10-10 | 209 | 1d | 0d | Dev2 | 8h |
| 212 | 6.5.8 | - Discrepancy Report | 1d | 2018-10-11 | 2018-10-11 | 210 | 0d |  | Dev1 | 8h |
| 213 | 6.5.9 | - Pilot Report | 1d | 2018-10-11 | 2018-10-11 | 211 | 1d | 0d | Dev2 | 8h |
| 214 | 6.6 | ATA Definition | 1d | 2018-10-12 | 2018-10-12 | 212 | 0d |  | Dev1 | 8h |
| 215 | 6.7 | Station Definition | 1d | 2018-10-12 | 2018-10-12 | 213 | 1d | 0d | Dev2 | 8h |
| 216 | 6.8 | Evaluate Repeat Discreapancy | 1d | 2018-10-15 | 2018-10-15 | 214 | 0d |  | Dev1 | 8h |
| 217 | 6.9 | Pilot Setup | 1d | 2018-10-15 | 2018-10-15 | 215 | 1d | 0d | Dev2 | 8h |
| 218 | 7 | **Forecast** | 9d | 2018-10-16 | 2018-10-26 |  | 0d |  |  | 144h |
| 219 | 7.1 | **Forecast Airframe Cost** | 3d | 2018-10-16 | 2018-10-18 |  | 0d |  |  | 48h |
| 220 | 7.1.1 | - Inspection Costs | 1d | 2018-10-16 | 2018-10-16 | 216 | 0d |  | Dev1 | 8h |
| 221 | 7.1.2 | - Overhaul Costs | 1d | 2018-10-16 | 2018-10-16 | 217 | 1d | 0d | Dev2 | 8h |
| 222 | 7.1.3 | - Retirement | 1d | 2018-10-17 | 2018-10-17 | 220 | 0d |  | Dev1 | 8h |
| 223 | 7.1.4 | - Enter All Costs | 1d | 2018-10-17 | 2018-10-17 | 221 | 1d | 0d | Dev2 | 8h |
| 224 | 7.1.5 | - Set Warning Times | 1d | 2018-10-18 | 2018-10-18 | 222 | 0d |  | Dev1 | 8h |
| 225 | 7.1.6 | - List Costs | 1d | 2018-10-18 | 2018-10-18 | 223 | 1d | 0d | Dev2 | 8h |

| ID | WBS | Task | Duration | Start | Finish | Predecessors | Total slack | Free slack | Resources | Work |
| --- | --- | --- | --- | --- | --- | --- | --- | --- | --- | --- |
| 226 | 7.2 | **Forecast Engine Cost** | 3d | 2018-10-19 | 2018-10-23 |  | 0d |  |  | 48h |
| 227 | 7.2.1 | - Inspection Costs | 1d | 2018-10-19 | 2018-10-19 | 224 | 0d |  | Dev1 | 8h |
| 228 | 7.2.2 | - Overhaul Costs | 1d | 2018-10-19 | 2018-10-19 | 225 | 1d | 0d | Dev2 | 8h |
| 229 | 7.2.3 | - Replacement Cost | 1d | 2018-10-22 | 2018-10-22 | 227 | 0d |  | Dev1 | 8h |
| 230 | 7.2.4 | - Enter All Costs | 1d | 2018-10-22 | 2018-10-22 | 228 | 1d | 0d | Dev2 | 8h |
| 231 | 7.2.5 | - Set Warning Times | 1d | 2018-10-23 | 2018-10-23 | 229 | 0d |  | Dev1 | 8h |
| 232 | 7.2.6 | - List Costs | 1d | 2018-10-23 | 2018-10-23 | 230 | 1d | 0d | Dev2 | 8h |
| 233 | 7.3 | **Forecast Auxiliary Cost** | 3d | 2018-10-24 | 2018-10-26 |  | 0d |  |  | 48h |
| 234 | 7.3.1 | - Inspection Costs | 1d | 2018-10-24 | 2018-10-24 | 231 | 0d |  | Dev1 | 8h |
| 235 | 7.3.2 | - Retirement Cost | 1d | 2018-10-24 | 2018-10-24 | 232 | 1d | 0d | Dev2 | 8h |
| 236 | 7.3.3 | - Overhaul Costs | 1d | 2018-10-25 | 2018-10-25 | 234 | 0d |  | Dev1 | 8h |
| 237 | 7.3.4 | - Add All Costs | 1d | 2018-10-25 | 2018-10-25 | 235 | 1d | 0d | Dev2 | 8h |
| 238 | 7.3.5 | - Set Warning Times | 1d | 2018-10-26 | 2018-10-26 | 236 | 0d |  | Dev1 | 8h |
| 239 | 7.3.6 | - List Costs | 1d | 2018-10-26 | 2018-10-26 | 237 | 1d | 0d | Dev2 | 8h |
| 240 | 8 | **Reports** | 6d | 2018-10-29 | 2018-11-05 |  | 0d |  |  | 88h |
| 241 | 8.1 | Maintenance Tracking | 1d | 2018-10-29 | 2018-10-29 | 238 | 0d |  | Dev1 | 8h |
| 242 | 8.2 | Fleetwide Report | 1d | 2018-10-29 | 2018-10-29 | 239 | 1d | 0d | Dev2 | 8h |
| 243 | 8.3 | Forecasting Report | 1d | 2018-10-30 | 2018-10-30 | 241 | 0d |  | Dev1 | 8h |
| 244 | 8.4 | Part Removal Report | 1d | 2018-10-30 | 2018-10-30 | 242 | 1d | 0d | Dev2 | 8h |
| 245 | 8.5 | Premature Failures | 1d | 2018-10-31 | 2018-10-31 | 243 | 0d |  | Dev1 | 8h |
| 246 | 8.6 | Maintenance Due | 1d | 2018-10-31 | 2018-10-31 | 244 | 1d | 0d | Dev2 | 8h |
| 247 | 8.7 | Fleetwide Bulletin | 1d | 2018-11-01 | 2018-11-01 | 245 | 0d |  | Dev1 | 8h |
| 248 | 8.8 | Master/Sub-Assembly | 1d | 2018-11-01 | 2018-11-01 | 246 | 1d | 0d | Dev2 | 8h |
| 249 | 8.9 | Reserve Value Report | 1d | 2018-11-02 | 2018-11-02 | 247 | 0d |  | Dev1 | 8h |
| 250 | 8.10 | Maint. Due By A/C | 1d | 2018-11-02 | 2018-11-02 | 248 | 1d |  | Dev2 | 8h |
| 251 | 8.11 | Form 09 | 1d | 2018-11-05 | 2018-11-05 | 249 | 0d |  | Dev1 | 8h |
